# 白名单数据源

Schedule from a web Gantt chart, 2025-12-02 to 2026-01-15.
Saturdays and Sundays are off

## Schedule

| ID | WBS | Task | Duration | Start | Finish |
| --- | --- | --- | --- | --- | --- |
| 2 | 1 | 上线日 | 1d | 2026-01-15 | 2026-01-15 |
| 3 | 2 | **业务** | 4d | 2025-12-02 | 2025-12-05 |
| 4 | 2.1 | 决策-前置小程序，数据字典、规则、指标等内容待明确补充需求 | 1d | 2025-12-02 | 2025-12-02 |
| 5 | 2.2 | ES-接口需求待完善 | 2d | 2025-12-02 | 2025-12-03 |
| 6 | 2.3 | 各系统（营销监测、ES、决策-前置小程序、决策-应用端）白名单需求完善明确 | 1d | 2025-12-04 | 2025-12-04 |
| 7 | 2.4 | 各系统（中台查ES）极优链路需求完善 | 1d | 2025-12-04 | 2025-12-04 |
| 8 | 2.5 | 各系统需求评估准出 | 2d | 2025-12-04 | 2025-12-05 |
| 9 | 3 | 孚嘉（外部初步评估开发时间） | 10d | 2025-12-02 | 2025-12-15 |
| 10 | 4 | **决策-前置小程序** | 22d | 2025-12-08 | 2026-01-06 |
| 11 | 4.1 | 开发 | 8d | 2025-12-08 | 2025-12-17 |
| 12 | 4.2 | 联调（与孚嘉） | 2d | 2025-12-18 | 2025-12-19 |
| 13 | 4.3 | 测试 | 12d | 2025-12-22 | 2026-01-06 |
| 14 | 5 | **营销监测** | 26d | 2025-12-08 | 2026-01-12 |
| 15 | 5.1 | 需求 | 1d | 2025-12-08 | 2025-12-08 |
| 16 | 5.2 | 设计 | 2d | 2025-12-09 | 2025-12-10 |
| 17 | 5.3 | 开发 | 14d | 2025-12-11 | 2025-12-30 |
| 18 | 5.4 | 造数，提供下游ES/决策/中台开发联调 | 1d | 2025-12-11 | 2025-12-11 |
| 19 | 5.5 | 联调（与决策-前置、ES、决策-应用） | 2d | 2025-12-31 | 2026-01-01 |
| 20 | 5.6 | 测试 | 6d | 2026-01-05 | 2026-01-12 |
| 21 | 6 | **ES（初步评估）** | 18d | 2025-12-02 | 2025-12-25 |
| 22 | 6.1 | 压测 | 4d | 2025-12-02 | 2025-12-05 |
| 23 | 6.2 | 开发 | 3d | 2025-12-08 | 2025-12-10 |
| 24 | 6.3 | 提供接口文档给决策、中台 | 1d | 2025-12-08 | 2025-12-08 |
| 25 | 6.4 | 联调（与营销监测、与中台） | 2d | 2025-12-12 | 2025-12-15 |
| 26 | 6.5 | 联调（与决策-应用端） | 2d | 2025-12-24 | 2025-12-25 |

| ID | WBS | Task | Duration | Start | Finish |
| --- | --- | --- | --- | --- | --- |
| 27 | 7 | **决策-应用端** | 21d | 2025-12-12 | 2026-01-09 |
| 28 | 7.1 | 开发（ES提供接口文档可并行） | 10d | 2025-12-12 | 2025-12-25 |
| 29 | 7.2 | 联调（与ES） | 2d | 2025-12-24 | 2025-12-25 |
| 30 | 7.3 | 测试（在极优项目链路中协同全流程测试） | 11d | 2025-12-26 | 2026-01-09 |
| 31 | 8 | **渠道、中台-客户业务流程** | 10d | 2025-12-09 | 2025-12-22 |
| 32 | 8.1 | 需求 | 1d | 2025-12-09 | 2025-12-09 |
| 33 | 8.2 | 设计 | 1d | 2025-12-10 | 2025-12-10 |
| 34 | 8.3 | 开发 | 3d | 2025-12-11 | 2025-12-15 |
| 35 | 8.4 | 联调（与ES） | 2d | 2025-12-16 | 2025-12-17 |
| 36 | 8.5 | 交付测试（当前计划预估） | 1d | 2025-12-18 | 2025-12-18 |
| 37 | 8.6 | 测试【测试最晚能接受的交付日】 | 1d | 2025-12-22 | 2025-12-22 |
